ID;WBS;Nível_Estrutura;Nome_da_Tarefa;Tipo;Duração_dias_úteis;Início;Término;Predecessoras_ID_FS;Sucessoras_ID;Recursos;Trabalho_horas_estimado;Custo_recursos_R$;Custo_fixo_R$;Custo_total_R$;Marco;Resumo;Observações
1;1;1;INÍCIO DO PROJETO;Marco;0;02/11/2026;02/11/2026;;3;;0;0;0;0;Sim;Não;Marco inicial.
2;2;1;1. Gestão e governança;Resumo;;02/11/2026;04/11/2026;;;Gerente de Projetos;48;8240;0;8240;Não;Sim;Resumo.
3;2.1;2;Reunião de kick-off;Tarefa;1;02/11/2026;02/11/2026;1;"4;7;8";"Gerente de Projetos; Especialista em Cozinha Industrial; Cliente / Operações";24;3920;0;3920;Não;Não;Objetivos, escopo preliminar, stakeholders e restrições.
4;2.2;2;Plano de gerenciamento, comunicação e riscos;Tarefa;3;02/11/2026;04/11/2026;3;5;Gerente de Projetos;24;4320;0;4320;Não;Não;Ritos, responsabilidades, controles e escalonamento.
5;2.3;2;Marco: plano aprovado;Marco;0;04/11/2026;04/11/2026;4;;;0;0;0;0;Sim;Não;Gate de governança.
6;3;1;2. Requisitos e viabilidade;Resumo;;02/11/2026;16/11/2026;;;Gerente de Projetos;440;70400;0;70400;Não;Sim;Resumo.
7;3.1;2;Levantamento operacional com cliente;Tarefa;3;02/11/2026;04/11/2026;3;9;"Gerente de Projetos; Especialista em Cozinha Industrial; Cliente / Operações";72;11760;0;11760;Não;Não;Cardápio, refeições/dia, turnos, fluxos, armazenagem, preparo, cocção, distribuição e lavagem.
8;3.2;2;Levantamento do imóvel e infraestrutura;Tarefa;3;02/11/2026;04/11/2026;3;9;"Arquiteto / Projetista; Engenheiro de Instalações; Encarregado de Obra";72;11280;0;11280;Não;Não;Medições, acessos, cargas, água, esgoto, gás, ventilação e restrições.
9;3.3;2;Matriz de requisitos e critérios de aceite;Tarefa;3;04/11/2026;06/11/2026;"7;8";10;"Gerente de Projetos; Arquiteto / Projetista; Especialista em Cozinha Industrial; Consultor de Segurança Alimentar; Cliente / Operações";120;19200;0;19200;Não;Não;Requisitos operacionais, sanitários, manutenção e documentação.
10;3.4;2;Estudo de capacidade e layout conceitual;Tarefa;5;06/11/2026;12/11/2026;9;11;"Arquiteto / Projetista; Especialista em Cozinha Industrial";80;12800;0;12800;Não;Não;Dimensionamento preliminar e fluxo operacional.
11;3.5;2;Estimativa preliminar de investimento e prazo;Tarefa;3;12/11/2026;16/11/2026;10;12;"Gerente de Projetos; Arquiteto / Projetista; Engenheiro de Instalações; Comprador / Suprimentos";96;15360;0;15360;Não;Não;Premissas, exclusões e contingência.
12;3.6;2;Marco: requisitos e viabilidade aprovados;Marco;0;16/11/2026;16/11/2026;11;"14;15;16";Cliente / Operações;0;0;0;0;Sim;Não;Gate de aprovação do escopo conceitual.
13;4;1;3. Projeto executivo e aprovações;Resumo;;16/11/2026;09/12/2026;;;"Arquiteto / Projetista; Engenheiro de Instalações";696;115440;0;115440;Não;Sim;Resumo.
14;4.1;2;Projeto de arquitetura e layout executivo;Tarefa;7;16/11/2026;24/11/2026;12;17;"Arquiteto / Projetista; Especialista em Cozinha Industrial";112;17920;0;17920;Não;Não;Layout, equipamentos, circulação e interfaces.
15;4.2;2;Projetos elétrico, hidráulico, gás e drenagem;Tarefa;8;16/11/2026;25/11/2026;12;18;Engenheiro de Instalações;64;12160;0;12160;Não;Não;Dimensionamento e documentação por profissionais habilitados.
16;4.3;2;Projeto de exaustão e ventilação;Tarefa;8;16/11/2026;25/11/2026;12;18;"Engenheiro de Instalações; Equipe HVAC / Exaustão";128;20160;0;20160;Não;Não;Detalhamento conforme equipamentos e requisitos aplicáveis.
17;4.4;2;Especificação técnica e lista de equipamentos;Tarefa;5;24/11/2026;30/11/2026;14;"18;23";"Especialista em Cozinha Industrial; Arquiteto / Projetista";80;12800;0;12800;Não;Não;Capacidade, dimensões, utilidades, instalação e manutenção.
18;4.5;2;Compatibilização e revisão de interferências;Tarefa;4;30/11/2026;03/12/2026;"15;16;17";"19;20";"Arquiteto / Projetista; Engenheiro de Instalações; Especialista em Cozinha Industrial";96;16320;0;16320;Não;Não;Conferir conflitos, acessos, manutenção e conexões.
19;4.6;2;Verificação de requisitos legais e aprovações;Tarefa;5;03/12/2026;09/12/2026;18;21;"Engenheiro de Instalações; Qualidade e Segurança; Consultor de Segurança Alimentar";120;20400;0;20400;Não;Não;Confirmar exigências locais e aplicáveis.
20;4.7;2;Orçamento detalhado, cronograma-base e compras;Tarefa;4;03/12/2026;08/12/2026;18;21;"Gerente de Projetos; Engenheiro de Instalações; Comprador / Suprimentos";96;15680;0;15680;Não;Não;Composições, cotações, reservas e marcos contratuais.
21;4.8;2;Marco: projetos e orçamento aprovados;Marco;0;09/12/2026;09/12/2026;"19;20";"24;25;29";Cliente / Operações;0;0;0;0;Sim;Não;Gate antes de executar serviços críticos.
22;5;1;4. Contratação e suprimentos;Resumo;;30/11/2026;12/01/2027;;;"Comprador / Suprimentos; Gerente de Projetos";352;42160;0;42160;Não;Sim;Resumo.
23;5.1;2;Equalização de propostas;Tarefa;5;30/11/2026;04/12/2026;17;"24;25";"Comprador / Suprimentos; Especialista em Cozinha Industrial";80;11600;0;11600;Não;Não;Equipamentos, exaustão, instalações e serviços.
24;5.2;2;Contratação de fornecedores e empreiteiros;Tarefa;4;09/12/2026;14/12/2026;"21;23";;"Gerente de Projetos; Comprador / Suprimentos";64;9600;0;9600;Não;Não;Escopo, prazo, garantias, medição e aceite.
25;5.3;2;Compra de equipamentos de longo prazo;Tarefa;1;09/12/2026;09/12/2026;"21;23";26;Comprador / Suprimentos;8;960;0;960;Não;Não;Pedido após aprovação técnica/comercial.
26;5.4;2;Fabricação e entrega de equipamentos principais;Tarefa;25;09/12/2026;12/01/2027;25;27;Fornecedor de Equipamentos;200;20000;0;20000;Não;Não;"Prazo ilustrativo; ajustar ao lead time contratado."
27;5.5;2;Marco: equipamentos críticos disponíveis;Marco;0;12/01/2027;12/01/2027;26;44;;0;0;0;0;Sim;Não;Pode ser dividido por lote.
28;6;1;5. Preparação e obras civis;Resumo;;09/12/2026;11/01/2027;;;"Encarregado de Obra; Equipe Civil e Acabamentos";560;64040;0;64040;Não;Sim;Resumo.
29;6.1;2;Mobilização, isolamento e plano de segurança;Tarefa;2;09/12/2026;10/12/2026;21;30;"Encarregado de Obra; Qualidade e Segurança";32;4640;0;4640;Não;Não;Sinalização, proteção e integração de equipes.
30;6.2;2;Demolições e remoções (se aplicável);Tarefa;3;10/12/2026;14/12/2026;29;31;"Encarregado de Obra; Equipe Civil e Acabamentos";48;5400;0;5400;Não;Não;Marcar N/A com justificativa se não houver demolição.
31;6.3;2;Adequações civis e bases de equipamentos;Tarefa;7;14/12/2026;22/12/2026;30;32;"Encarregado de Obra; Equipe Civil e Acabamentos";112;12600;0;12600;Não;Não;Bases, aberturas, suportes e correções.
32;6.4;2;Infraestrutura embutida e passagens;Tarefa;6;22/12/2026;29/12/2026;31;"33;37;38;39;40";"Encarregado de Obra; Equipe Civil e Acabamentos; Equipe Elétrica; Equipe Hidráulica e Gás";192;21600;0;21600;Não;Não;Coordenar tubulações, eletrodutos, drenos e passagens.
33;6.5;2;Impermeabilização e teste;Tarefa;3;29/12/2026;31/12/2026;32;34;"Encarregado de Obra; Equipe Civil e Acabamentos";48;5400;0;5400;Não;Não;Conforme áreas e projeto.
34;6.6;2;Pisos, paredes, revestimentos e acabamentos;Tarefa;8;31/12/2026;11/01/2027;33;35;"Encarregado de Obra; Equipe Civil e Acabamentos";128;14400;0;14400;Não;Não;Caimentos e detalhes de limpeza conforme projeto.
35;6.7;2;Marco: áreas civis liberadas;Marco;0;11/01/2027;11/01/2027;34;"42;44";;0;0;0;0;Sim;Não;Inspeção antes da instalação.
36;7;1;6. Instalações prediais e sistemas;Resumo;;29/12/2026;11/01/2027;;;"Encarregado de Obra; Equipe Elétrica; Equipe Hidráulica e Gás; Equipe HVAC / Exaustão";488;62840;0;62840;Não;Sim;Resumo.
37;7.1;2;Instalação elétrica, quadros e circuitos;Tarefa;7;29/12/2026;06/01/2027;32;41;"Encarregado de Obra; Equipe Elétrica";112;13440;0;13440;Não;Não;Testes e identificação conforme projeto.
38;7.2;2;Água, esgoto, drenagem e pontos de consumo;Tarefa;6;29/12/2026;05/01/2027;32;41;"Encarregado de Obra; Equipe Hidráulica e Gás";96;11760;0;11760;Não;Não;Testes conforme especificação.
39;7.3;2;Rede de gás e dispositivos de segurança;Tarefa;5;29/12/2026;04/01/2027;32;41;"Encarregado de Obra; Equipe Hidráulica e Gás";80;9800;0;9800;Não;Não;Execução e testes por profissionais habilitados.
40;7.4;2;Montagem de exaustão e ventilação;Tarefa;8;29/12/2026;07/01/2027;32;41;"Encarregado de Obra; Equipe HVAC / Exaustão";128;16320;0;16320;Não;Não;Dutos, coifas, ventiladores, acessos e balanceamento.
41;7.5;2;Testes das instalações e correção de falhas;Tarefa;3;07/01/2027;11/01/2027;"37;38;39;40";42;"Engenheiro de Instalações; Qualidade e Segurança; Encarregado de Obra";72;11520;0;11520;Não;Não;Registros de teste, pendências e evidências.
42;7.6;2;Marco: instalações liberadas para montagem;Marco;0;11/01/2027;11/01/2027;"41;35";"45;46";;0;0;0;0;Sim;Não;Gate técnico.
43;8;1;7. Instalação de equipamentos e mobiliário;Resumo;;12/01/2027;22/01/2027;;;"Encarregado de Obra; Fornecedor de Equipamentos";352;41360;0;41360;Não;Sim;Resumo.
44;8.1;2;Recebimento e inspeção de equipamentos;Tarefa;2;12/01/2027;13/01/2027;"27;35";"45;46";"Encarregado de Obra; Fornecedor de Equipamentos; Qualidade e Segurança";48;6240;0;6240;Não;Não;Conferir modelo, avarias, acessórios e documentos.
45;8.2;2;Posicionamento e fixação de equipamentos;Tarefa;5;13/01/2027;19/01/2027;"44;42";47;"Encarregado de Obra; Fornecedor de Equipamentos";80;9200;0;9200;Não;Não;Respeitar layout, folgas e instruções do fabricante.
46;8.3;2;Instalação de mobiliário inox e acessórios;Tarefa;4;13/01/2027;18/01/2027;"44;42";47;"Encarregado de Obra; Fornecedor de Equipamentos";64;7360;0;7360;Não;Não;Bancadas, prateleiras, pias e acessórios previstos.
47;8.4;2;Conexões finais e integração de utilidades;Tarefa;4;19/01/2027;22/01/2027;"45;46";48;"Encarregado de Obra; Equipe Elétrica; Equipe Hidráulica e Gás; Equipe HVAC / Exaustão; Fornecedor de Equipamentos";160;18560;0;18560;Não;Não;Conexões e verificações por disciplina.
48;8.5;2;Marco: equipamentos instalados;Marco;0;22/01/2027;22/01/2027;47;"50;51";;0;0;0;0;Sim;Não;Pronto para testes funcionais.
49;9;1;8. Qualidade, comissionamento e treinamento;Resumo;;22/01/2027;08/02/2027;;;"Técnico de Comissionamento; Consultor de Segurança Alimentar; Qualidade e Segurança";784;110040;0;110040;Não;Sim;Resumo.
50;9.1;2;Inspeção de qualidade e Punch List inicial;Tarefa;3;22/01/2027;26/01/2027;48;55;"Qualidade e Segurança; Encarregado de Obra; Técnico de Comissionamento";72;10560;0;10560;Não;Não;Pendências com local, severidade, responsável, prazo e evidência.
51;9.2;2;Testes funcionais por equipamento e sistema;Tarefa;4;22/01/2027;27/01/2027;48;"52;54;56";"Técnico de Comissionamento; Fornecedor de Equipamentos; Engenheiro de Instalações";96;14080;0;14080;Não;Não;Testes documentados conforme especificações.
52;9.3;2;Testes integrados de energia, água, gás e exaustão;Tarefa;3;27/01/2027;29/01/2027;51;"53;55";"Técnico de Comissionamento; Engenheiro de Instalações; Qualidade e Segurança";72;12000;0;12000;Não;Não;Executar após liberações e em condições seguras.
53;9.4;2;Verificação sanitária e do fluxo operacional;Tarefa;3;29/01/2027;02/02/2027;52;55;"Consultor de Segurança Alimentar; Especialista em Cozinha Industrial; Qualidade e Segurança";72;11760;0;11760;Não;Não;Verificar requisitos aplicáveis e procedimentos.
54;9.5;2;Treinamento de operação, limpeza e manutenção;Tarefa;2;27/01/2027;28/01/2027;51;57;"Fornecedor de Equipamentos; Técnico de Comissionamento; Consultor de Segurança Alimentar; Cliente / Operações";64;8800;0;8800;Não;Não;Lista de presença, materiais e manuais.
55;9.6;2;Correção e reinspeção da Punch List;Tarefa;5;02/02/2027;08/02/2027;"50;52;53";57;"Encarregado de Obra; Equipe Civil e Acabamentos; Equipe Elétrica; Equipe Hidráulica e Gás; Equipe HVAC / Exaustão; Fornecedor de Equipamentos; Técnico de Comissionamento";280;33000;0;33000;Não;Não;Pendências críticas fechadas ou formalmente aceitas.
56;9.7;2;Dossiê técnico, manuais e garantias;Tarefa;4;27/01/2027;01/02/2027;51;57;"Gerente de Projetos; Engenheiro de Instalações; Fornecedor de Equipamentos; Técnico de Comissionamento";128;19840;0;19840;Não;Não;Registros de testes, manuais, garantias e as-built quando contratado.
57;9.8;2;Marco: comissionamento aprovado;Marco;0;08/02/2027;08/02/2027;"54;55;56";59;Cliente / Operações;0;0;0;0;Sim;Não;Gate de aceite técnico/operacional.
58;10;1;9. Entrega e encerramento;Resumo;;08/02/2027;10/02/2027;;;Gerente de Projetos;136;20640;0;20640;Não;Sim;Resumo.
59;10.1;2;Vistoria final conjunta;Tarefa;1;08/02/2027;08/02/2027;57;60;"Gerente de Projetos; Qualidade e Segurança; Cliente / Operações";24;3840;0;3840;Não;Não;Registrar ressalvas e decisão de aceite.
60;10.2;2;Aceite formal e transferência para operação;Tarefa;1;08/02/2027;08/02/2027;59;"61;62;65;66";"Gerente de Projetos; Cliente / Operações";16;2560;0;2560;Não;Não;Responsáveis, data, exceções e documentos aceitos.
61;10.3;2;Fechamento financeiro e contratual;Tarefa;3;08/02/2027;10/02/2027;60;63;"Gerente de Projetos; Comprador / Suprimentos";48;7200;0;7200;Não;Não;Medições, pagamentos, retenções, aditivos e saldos.
62;10.4;2;Lições aprendidas e avaliação de fornecedores;Tarefa;2;08/02/2027;09/02/2027;60;63;"Gerente de Projetos; Comprador / Suprimentos; Cliente / Operações";48;7040;0;7040;Não;Não;Desvios, causas e melhorias.
63;10.5;2;Marco: projeto encerrado;Marco;0;10/02/2027;10/02/2027;"61;62";;;0;0;0;0;Sim;Não;Gate de encerramento.
64;11;1;10. Garantia e pós-ocupação;Resumo;;08/02/2027;12/02/2027;;;"Gerente de Projetos; Técnico de Comissionamento";120;18800;0;18800;Não;Sim;Resumo.
65;11.1;2;Acompanhamento inicial pós-operação;Tarefa;5;08/02/2027;12/02/2027;60;;"Gerente de Projetos; Técnico de Comissionamento; Cliente / Operações";120;18800;0;18800;Não;Não;Registrar chamados e ajustes iniciais.
66;11.2;2;Marco: início do período de garantia;Marco;0;08/02/2027;08/02/2027;60;;;0;0;0;0;Sim;Não;Prazo conforme contrato.
