# Template MICI - Implantação de Cozinha Industrial

Schedule from MS Project XML, 2026-11-02 to 2027-02-12, costs in R$.

## Calendars

- Segunda a sexta: Mon-Fri 08:00-12:00, 13:00-17:00; Sat-Sun off.

## Resources

| Resource | Rate |
| --- | --- |
| Gerente de Projetos | 180 |
| Arquiteto / Projetista | 150 |
| Engenheiro de Instalações | 190 |
| Qualidade e Segurança | 160 |
| Especialista em Cozinha Industrial | 170 |
| Comprador / Suprimentos | 120 |
| Encarregado de Obra | 130 |
| Equipe Civil e Acabamentos | 95 |
| Equipe Elétrica | 110 |
| Equipe Hidráulica e Gás | 115 |
| Equipe HVAC / Exaustão | 125 |
| Fornecedor de Equipamentos | 100 |
| Técnico de Comissionamento | 150 |
| Consultor de Segurança Alimentar | 160 |
| Cliente / Operações | 140 |

## Schedule

| ID | WBS | Task | Type | Duration | Start | Finish | Predecessors | Resources | Work | Cost |
| --- | --- | --- | --- | --- | --- | --- | --- | --- | --- | --- |
| 1 | 1 | INÍCIO DO PROJETO | milestone | 0d | 2026-11-02 | 2026-11-02 |  |  |  |  |
| 2 | 2 | **1. Gestão e governança** |  | 3d | 2026-11-02 | 2026-11-04 |  |  | 48h | 82.4 |
| 3 | 2.1 | Reunião de kick-off |  | 1d | 2026-11-02 | 2026-11-02 | 1 | Gerente de Projetos; Especialista em Cozinha Industrial; Cliente / Operações | 24h | 39.2 |
| 4 | 2.2 | Plano de gerenciamento, comunicação e riscos |  | 3d | 2026-11-02 | 2026-11-04 | 3 | Gerente de Projetos | 24h | 43.2 |
| 5 | 2.3 | Marco: plano aprovado | milestone | 0d | 2026-11-04 | 2026-11-04 | 4 |  |  |  |
| 6 | 3 | **2. Requisitos e viabilidade** |  | 15d | 2026-11-02 | 2026-11-16 |  |  | 440h | 704 |
| 7 | 3.1 | Levantamento operacional com cliente |  | 3d | 2026-11-02 | 2026-11-04 | 3 | Gerente de Projetos; Especialista em Cozinha Industrial; Cliente / Operações | 72h | 117.6 |
| 8 | 3.2 | Levantamento do imóvel e infraestrutura |  | 3d | 2026-11-02 | 2026-11-04 | 3 | Arquiteto / Projetista; Engenheiro de Instalações; Encarregado de Obra | 72h | 112.8 |
| 9 | 3.3 | Matriz de requisitos e critérios de aceite |  | 3d | 2026-11-04 | 2026-11-06 | 7, 8 | Gerente de Projetos; Arquiteto / Projetista; Especialista em Cozinha Industrial; Consultor de Segurança Alimentar; Cliente / Operações | 120h | 192 |
| 10 | 3.4 | Estudo de capacidade e layout conceitual |  | 5d | 2026-11-06 | 2026-11-12 | 9 | Arquiteto / Projetista; Especialista em Cozinha Industrial | 80h | 128 |
| 11 | 3.5 | Estimativa preliminar de investimento e prazo |  | 3d | 2026-11-12 | 2026-11-16 | 10 | Gerente de Projetos; Arquiteto / Projetista; Engenheiro de Instalações; Comprador / Suprimentos | 96h | 153.6 |
| 12 | 3.6 | Marco: requisitos e viabilidade aprovados | milestone | 0d | 2026-11-16 | 2026-11-16 | 11 |  |  |  |
| 13 | 4 | **3. Projeto executivo e aprovações** |  | 24d | 2026-11-16 | 2026-12-09 |  |  | 696h | 1,154.4 |
| 14 | 4.1 | Projeto de arquitetura e layout executivo |  | 7d | 2026-11-16 | 2026-11-24 | 12 | Arquiteto / Projetista; Especialista em Cozinha Industrial | 112h | 179.2 |
| 15 | 4.2 | Projetos elétrico, hidráulico, gás e drenagem |  | 8d | 2026-11-16 | 2026-11-25 | 12 | Engenheiro de Instalações | 64h | 121.6 |
| 16 | 4.3 | Projeto de exaustão e ventilação |  | 8d | 2026-11-16 | 2026-11-25 | 12 | Engenheiro de Instalações; Equipe HVAC / Exaustão | 128h | 201.6 |
| 17 | 4.4 | Especificação técnica e lista de equipamentos |  | 5d | 2026-11-24 | 2026-11-30 | 14 | Especialista em Cozinha Industrial; Arquiteto / Projetista | 80h | 128 |
| 18 | 4.5 | Compatibilização e revisão de interferências |  | 4d | 2026-11-30 | 2026-12-03 | 15, 16, 17 | Arquiteto / Projetista; Engenheiro de Instalações; Especialista em Cozinha Industrial | 96h | 163.2 |
| 19 | 4.6 | Verificação de requisitos legais e aprovações |  | 5d | 2026-12-03 | 2026-12-09 | 18 | Engenheiro de Instalações; Qualidade e Segurança; Consultor de Segurança Alimentar | 120h | 204 |
| 20 | 4.7 | Orçamento detalhado, cronograma-base e compras |  | 4d | 2026-12-03 | 2026-12-08 | 18 | Gerente de Projetos; Engenheiro de Instalações; Comprador / Suprimentos | 96h | 156.8 |
| 21 | 4.8 | Marco: projetos e orçamento aprovados | milestone | 0d | 2026-12-09 | 2026-12-09 | 19, 20 |  |  |  |
| 22 | 5 | **4. Contratação e suprimentos** |  | 44d | 2026-11-30 | 2027-01-12 |  |  | 352h | 421.6 |
| 23 | 5.1 | Equalização de propostas |  | 5d | 2026-11-30 | 2026-12-04 | 17 | Comprador / Suprimentos; Especialista em Cozinha Industrial | 80h | 116 |
| 24 | 5.2 | Contratação de fornecedores e empreiteiros |  | 4d | 2026-12-09 | 2026-12-14 | 21, 23 | Gerente de Projetos; Comprador / Suprimentos | 64h | 96 |
| 25 | 5.3 | Compra de equipamentos de longo prazo |  | 1d | 2026-12-09 | 2026-12-09 | 21, 23 | Comprador / Suprimentos | 8h | 9.6 |
| 26 | 5.4 | Fabricação e entrega de equipamentos principais |  | 25d | 2026-12-09 | 2027-01-12 | 25 | Fornecedor de Equipamentos | 200h | 200 |
| 27 | 5.5 | Marco: equipamentos críticos disponíveis | milestone | 0d | 2027-01-12 | 2027-01-12 | 26 |  |  |  |

Notes:
- 1: Marco inicial.
- 2: Resumo.
- 3: Objetivos, escopo preliminar, stakeholders e restrições.
- 4: Ritos, responsabilidades, controles e escalonamento.
- 5: Gate de governança.
- 6: Resumo.
- 7: Cardápio, refeições/dia, turnos, fluxos, armazenagem, preparo, cocção, distribuição e lavagem.
- 8: Medições, acessos, cargas, água, esgoto, gás, ventilação e restrições.
- 9: Requisitos operacionais, sanitários, manutenção e documentação.
- 10: Dimensionamento preliminar e fluxo operacional.
- 11: Premissas, exclusões e contingência.
- 12: Gate de aprovação do escopo conceitual.
- 13: Resumo.
- 14: Layout, equipamentos, circulação e interfaces.
- 15: Dimensionamento e documentação por profissionais habilitados.
- 16: Detalhamento conforme equipamentos e requisitos aplicáveis.
- 17: Capacidade, dimensões, utilidades, instalação e manutenção.
- 18: Conferir conflitos, acessos, manutenção e conexões.
- 19: Confirmar exigências locais e aplicáveis.
- 20: Composições, cotações, reservas e marcos contratuais.
- 21: Gate antes de executar serviços críticos.
- 22: Resumo.
- 23: Equipamentos, exaustão, instalações e serviços.
- 24: Escopo, prazo, garantias, medição e aceite.
- 25: Pedido após aprovação técnica/comercial.
- 26: Prazo ilustrativo; ajustar ao lead time contratado.
- 27: Pode ser dividido por lote.

| ID | WBS | Task | Type | Duration | Start | Finish | Predecessors | Resources | Work | Cost |
| --- | --- | --- | --- | --- | --- | --- | --- | --- | --- | --- |
| 28 | 6 | **5. Preparação e obras civis** |  | 34d | 2026-12-09 | 2027-01-11 |  |  | 560h | 640.4 |
| 29 | 6.1 | Mobilização, isolamento e plano de segurança |  | 2d | 2026-12-09 | 2026-12-10 | 21 | Encarregado de Obra; Qualidade e Segurança | 32h | 46.4 |
| 30 | 6.2 | Demolições e remoções (se aplicável) |  | 3d | 2026-12-10 | 2026-12-14 | 29 | Encarregado de Obra; Equipe Civil e Acabamentos | 48h | 54 |
| 31 | 6.3 | Adequações civis e bases de equipamentos |  | 7d | 2026-12-14 | 2026-12-22 | 30 | Encarregado de Obra; Equipe Civil e Acabamentos | 112h | 126 |
| 32 | 6.4 | Infraestrutura embutida e passagens |  | 6d | 2026-12-22 | 2026-12-29 | 31 | Encarregado de Obra; Equipe Civil e Acabamentos; Equipe Elétrica; Equipe Hidráulica e Gás | 192h | 216 |
| 33 | 6.5 | Impermeabilização e teste |  | 3d | 2026-12-29 | 2026-12-31 | 32 | Encarregado de Obra; Equipe Civil e Acabamentos | 48h | 54 |
| 34 | 6.6 | Pisos, paredes, revestimentos e acabamentos |  | 8d | 2026-12-31 | 2027-01-11 | 33 | Encarregado de Obra; Equipe Civil e Acabamentos | 128h | 144 |
| 35 | 6.7 | Marco: áreas civis liberadas | milestone | 0d | 2027-01-11 | 2027-01-11 | 34 |  |  |  |
| 36 | 7 | **6. Instalações prediais e sistemas** |  | 14d | 2026-12-29 | 2027-01-11 |  |  | 488h | 628.4 |
| 37 | 7.1 | Instalação elétrica, quadros e circuitos |  | 7d | 2026-12-29 | 2027-01-06 | 32 | Encarregado de Obra; Equipe Elétrica | 112h | 134.4 |
| 38 | 7.2 | Água, esgoto, drenagem e pontos de consumo |  | 6d | 2026-12-29 | 2027-01-05 | 32 | Encarregado de Obra; Equipe Hidráulica e Gás | 96h | 117.6 |
| 39 | 7.3 | Rede de gás e dispositivos de segurança |  | 5d | 2026-12-29 | 2027-01-04 | 32 | Encarregado de Obra; Equipe Hidráulica e Gás | 80h | 98 |
| 40 | 7.4 | Montagem de exaustão e ventilação |  | 8d | 2026-12-29 | 2027-01-07 | 32 | Encarregado de Obra; Equipe HVAC / Exaustão | 128h | 163.2 |
| 41 | 7.5 | Testes das instalações e correção de falhas |  | 3d | 2027-01-07 | 2027-01-11 | 37, 38, 39, 40 | Engenheiro de Instalações; Qualidade e Segurança; Encarregado de Obra | 72h | 115.2 |
| 42 | 7.6 | Marco: instalações liberadas para montagem | milestone | 0d | 2027-01-11 | 2027-01-11 | 41, 35 |  |  |  |
| 43 | 8 | **7. Instalação de equipamentos e mobiliário** |  | 11d | 2027-01-12 | 2027-01-22 |  |  | 352h | 413.6 |
| 44 | 8.1 | Recebimento e inspeção de equipamentos |  | 2d | 2027-01-12 | 2027-01-13 | 27, 35 | Encarregado de Obra; Fornecedor de Equipamentos; Qualidade e Segurança | 48h | 62.4 |
| 45 | 8.2 | Posicionamento e fixação de equipamentos |  | 5d | 2027-01-13 | 2027-01-19 | 44, 42 | Encarregado de Obra; Fornecedor de Equipamentos | 80h | 92 |
| 46 | 8.3 | Instalação de mobiliário inox e acessórios |  | 4d | 2027-01-13 | 2027-01-18 | 44, 42 | Encarregado de Obra; Fornecedor de Equipamentos | 64h | 73.6 |
| 47 | 8.4 | Conexões finais e integração de utilidades |  | 4d | 2027-01-19 | 2027-01-22 | 45, 46 | Encarregado de Obra; Equipe Elétrica; Equipe Hidráulica e Gás; Equipe HVAC / Exaustão; Fornecedor de Equipamentos | 160h | 185.6 |
| 48 | 8.5 | Marco: equipamentos instalados | milestone | 0d | 2027-01-22 | 2027-01-22 | 47 |  |  |  |
| 49 | 9 | **8. Qualidade, comissionamento e treinamento** |  | 18d | 2027-01-22 | 2027-02-08 |  |  | 784h | 1,100.4 |
| 50 | 9.1 | Inspeção de qualidade e Punch List inicial |  | 3d | 2027-01-22 | 2027-01-26 | 48 | Qualidade e Segurança; Encarregado de Obra; Técnico de Comissionamento | 72h | 105.6 |
| 51 | 9.2 | Testes funcionais por equipamento e sistema |  | 4d | 2027-01-22 | 2027-01-27 | 48 | Técnico de Comissionamento; Fornecedor de Equipamentos; Engenheiro de Instalações | 96h | 140.8 |
| 52 | 9.3 | Testes integrados de energia, água, gás e exaustão |  | 3d | 2027-01-27 | 2027-01-29 | 51 | Técnico de Comissionamento; Engenheiro de Instalações; Qualidade e Segurança | 72h | 120 |
| 53 | 9.4 | Verificação sanitária e do fluxo operacional |  | 3d | 2027-01-29 | 2027-02-02 | 52 | Consultor de Segurança Alimentar; Especialista em Cozinha Industrial; Qualidade e Segurança | 72h | 117.6 |
| 54 | 9.5 | Treinamento de operação, limpeza e manutenção |  | 2d | 2027-01-27 | 2027-01-28 | 51 | Fornecedor de Equipamentos; Técnico de Comissionamento; Consultor de Segurança Alimentar; Cliente / Operações | 64h | 88 |
| 55 | 9.6 | Correção e reinspeção da Punch List |  | 5d | 2027-02-02 | 2027-02-08 | 50, 52, 53 | Encarregado de Obra; Equipe Civil e Acabamentos; Equipe Elétrica; Equipe Hidráulica e Gás; Equipe HVAC / Exaustão; Fornecedor de Equipamentos; Técnico de Comissionamento | 280h | 330 |
| 56 | 9.7 | Dossiê técnico, manuais e garantias |  | 4d | 2027-01-27 | 2027-02-01 | 51 | Gerente de Projetos; Engenheiro de Instalações; Fornecedor de Equipamentos; Técnico de Comissionamento | 128h | 198.4 |
| 57 | 9.8 | Marco: comissionamento aprovado | milestone | 0d | 2027-02-08 | 2027-02-08 | 54, 55, 56 |  |  |  |

Notes:
- 28: Resumo.
- 29: Sinalização, proteção e integração de equipes.
- 30: Marcar N/A com justificativa se não houver demolição.
- 31: Bases, aberturas, suportes e correções.
- 32: Coordenar tubulações, eletrodutos, drenos e passagens.
- 33: Conforme áreas e projeto.
- 34: Caimentos e detalhes de limpeza conforme projeto.
- 35: Inspeção antes da instalação.
- 36: Resumo.
- 37: Testes e identificação conforme projeto.
- 38: Testes conforme especificação.
- 39: Execução e testes por profissionais habilitados.
- 40: Dutos, coifas, ventiladores, acessos e balanceamento.
- 41: Registros de teste, pendências e evidências.
- 42: Gate técnico.
- 43: Resumo.
- 44: Conferir modelo, avarias, acessórios e documentos.
- 45: Respeitar layout, folgas e instruções do fabricante.
- 46: Bancadas, prateleiras, pias e acessórios previstos.
- 47: Conexões e verificações por disciplina.
- 48: Pronto para testes funcionais.
- 49: Resumo.
- 50: Pendências com local, severidade, responsável, prazo e evidência.
- 51: Testes documentados conforme especificações.
- 52: Executar após liberações e em condições seguras.
- 53: Verificar requisitos aplicáveis e procedimentos.
- 54: Lista de presença, materiais e manuais.
- 55: Pendências críticas fechadas ou formalmente aceitas.
- 56: Registros de testes, manuais, garantias e as-built quando contratado.
- 57: Gate de aceite técnico/operacional.

| ID | WBS | Task | Type | Duration | Start | Finish | Predecessors | Resources | Work | Cost |
| --- | --- | --- | --- | --- | --- | --- | --- | --- | --- | --- |
| 58 | 10 | **9. Entrega e encerramento** |  | 3d | 2027-02-08 | 2027-02-10 |  |  | 136h | 206.4 |
| 59 | 10.1 | Vistoria final conjunta |  | 1d | 2027-02-08 | 2027-02-08 | 57 | Gerente de Projetos; Qualidade e Segurança; Cliente / Operações | 24h | 38.4 |
| 60 | 10.2 | Aceite formal e transferência para operação |  | 1d | 2027-02-08 | 2027-02-08 | 59 | Gerente de Projetos; Cliente / Operações | 16h | 25.6 |
| 61 | 10.3 | Fechamento financeiro e contratual |  | 3d | 2027-02-08 | 2027-02-10 | 60 | Gerente de Projetos; Comprador / Suprimentos | 48h | 72 |
| 62 | 10.4 | Lições aprendidas e avaliação de fornecedores |  | 2d | 2027-02-08 | 2027-02-09 | 60 | Gerente de Projetos; Comprador / Suprimentos; Cliente / Operações | 48h | 70.4 |
| 63 | 10.5 | Marco: projeto encerrado | milestone | 0d | 2027-02-10 | 2027-02-10 | 61, 62 |  |  |  |
| 64 | 11 | **10. Garantia e pós-ocupação** |  | 5d | 2027-02-08 | 2027-02-12 |  |  | 120h | 188 |
| 65 | 11.1 | Acompanhamento inicial pós-operação |  | 5d | 2027-02-08 | 2027-02-12 | 60 | Gerente de Projetos; Técnico de Comissionamento; Cliente / Operações | 120h | 188 |
| 66 | 11.2 | Marco: início do período de garantia | milestone | 0d | 2027-02-08 | 2027-02-08 | 60 |  |  |  |

Notes:
- 58: Resumo.
- 59: Registrar ressalvas e decisão de aceite.
- 60: Responsáveis, data, exceções e documentos aceitos.
- 61: Medições, pagamentos, retenções, aditivos e saldos.
- 62: Desvios, causas e melhorias.
- 63: Gate de encerramento.
- 64: Resumo.
- 65: Registrar chamados e ajustes iniciais.
- 66: Prazo conforme contrato.
